# Новый продукт

Schedule from MS Project, 2004-01-01 to 2006-12-07.

## Calendars

- Стандартный: Mon-Fri 09:00-13:00, 14:00-18:00; Sat-Sun off.

## Resources

| Resource |
| --- |
| Руководство |
| Разработчики продукта |
| Юридический отдел |
| Маркетинг |
| Руководитель проекта |
| Инженер процесса |
| Инженер по производству |
| Отдел контроля безопасности |
| Бухгалтерия |
| Заказчик |
| Потребители |

## Schedule

| ID | WBS | Task | Type | Duration | Start | Finish | Predecessors | Total slack | Resources | Work |
| --- | --- | --- | --- | --- | --- | --- | --- | --- | --- | --- |
| 1 | 1 | **Шаблон разработки нового продукта** |  | 766d | 2004-01-01 | 2006-12-07 |  | 0d |  | 15688h |
| 2 | 1.1 | **Стадия начального отбора нового продукта** |  | 9d | 2004-01-01 | 2004-01-13 |  | 0d |  | 72h |
| 3 | 1.1.1 | Определение перспективы нового продукта | milestone | 0d | 2004-01-01 | 2004-01-01 |  | 0d | Руководство; Разработчики продукта |  |
| 4 | 1.1.2 | Описание сути нового продукта (одностраничный письменный документ) |  | 2d | 2004-01-01 | 2004-01-02 | 3 | 0d | Разработчики продукта | 16h |
| 5 | 1.1.3 | Сбор информации, необходимой для принятия решения о целесообразности проекта |  | 6d | 2004-01-05 | 2004-01-12 | 4 | 0d | Разработчики продукта | 48h |
| 6 | 1.1.4 | Выяснение мнения комиссии по отбору (одобрение или неодобрение идеи) |  | 1d | 2004-01-13 | 2004-01-13 | 5 | 0d | Разработчики продукта | 8h |
| 7 | 1.1.5 | Точка решения - передавать или не передавать проект на стадию предварительного исследования | milestone | 0d | 2004-01-13 | 2004-01-13 | 6 | 0d | Руководство; Разработчики продукта |  |
| 8 | 1.2 | **Стадия предварительного исследования** |  | 53d | 2004-01-14 | 2004-03-26 |  | 0d |  | 1216h |
| 9 | 1.2.1 | Назначение ресурсов для предварительного исследования |  | 1d | 2004-01-14 | 2004-01-14 | 7 | 0d | Руководство | 8h |
| 10 | 1.2.2 | Разработка плана предварительного исследования |  | 5d | 2004-01-15 | 2004-01-21 | 9 | 751d | Разработчики продукта; Руководитель проекта | 80h |
| 11 | 1.2.3 | Исследование рынка |  | 10d | 2004-01-15 | 2004-01-28 | 9 | 746d | Маркетинг | 80h |
| 12 | 1.2.4 | Анализ конкуренции |  | 5d | 2004-01-15 | 2004-01-21 | 9 | 0d | Маркетинг | 40h |
| 13 | 1.2.5 | **Анализ технической осуществимости** |  | 20d | 2004-01-22 | 2004-02-18 |  | 0d |  | 160h |
| 14 | 1.2.5.1 | Производство опытного образца продукта |  | 10d | 2004-01-22 | 2004-02-04 | 12 | 0d | Разработчики продукта | 80h |
| 15 | 1.2.5.2 | Оценка опытного образца |  | 5d | 2004-02-05 | 2004-02-11 | 14 | 0d | Разработчики продукта | 40h |
| 16 | 1.2.5.3 | Определение этапов процесса коммерческого производства |  | 5d | 2004-02-12 | 2004-02-18 | 15 | 0d | Инженер процесса | 40h |
| 17 | 1.2.6 | Оценка производственных возможностей |  | 10d | 2004-02-19 | 2004-03-03 | 16 | 0d | Разработчики продукта; Инженер по производству | 160h |
| 18 | 1.2.7 | Рассмотрение вопросов безопасности |  | 10d | 2004-02-19 | 2004-03-03 | 17SS | 0d | Отдел контроля безопасности | 80h |
| 19 | 1.2.8 | Рассмотрение вопросов взаимодействия с окружающей средой |  | 10d | 2004-02-19 | 2004-03-03 | 18SS | 0d | Разработчики продукта; Юридический отдел | 160h |
| 20 | 1.2.9 | Рассмотрение юридических вопросов |  | 10d | 2004-02-19 | 2004-03-03 | 19SS | 0d | Юридический отдел; Руководитель проекта | 160h |
| 21 | 1.2.10 | Финансовая оценка |  | 10d | 2004-03-04 | 2004-03-17 | 20, 17, 18, 19 | 0d | Бухгалтерия | 80h |
| 22 | 1.2.11 | Разработка анализа рисков |  | 5d | 2004-03-18 | 2004-03-24 | 21 | 0d | Разработчики продукта; Руководитель проекта | 80h |
| 23 | 1.2.12 | Создание чернового плана для стадии разработки |  | 10d | 2004-03-04 | 2004-03-17 | 21SS | 5d | Разработчики продукта | 80h |
| 24 | 1.2.13 | Анализ результатов предварительной стадии |  | 2d | 2004-03-25 | 2004-03-26 | 22, 23 | 0d | Руководство; Разработчики продукта; Руководитель проекта | 48h |
| 25 | 1.2.14 | Точка решения - передавать или не передавать проект на стадию разработки | milestone | 0d | 2004-03-26 | 2004-03-26 | 24 | 704d | Руководство; Руководитель проекта |  |

| ID | WBS | Task | Type | Duration | Start | Finish | Predecessors | Total slack | Free slack | Resources | Work |
| --- | --- | --- | --- | --- | --- | --- | --- | --- | --- | --- | --- |
| 26 | 1.3 | **Стадия разработки** |  | 264d | 2004-03-29 | 2005-03-31 |  | 0d |  |  | 5408h |
| 27 | 1.3.1 | Назначение ресурсов плану стадии разработки |  | 1d | 2004-03-29 | 2004-03-29 | 24 | 0d |  | Руководство; Руководитель проекта | 16h |
| 28 | 1.3.2 | **Исследование рынка** |  | 40d | 2004-03-30 | 2004-05-24 |  | 2d |  |  | 480h |
| 29 | 1.3.2.1 | Сбор информации о рынке |  | 15d | 2004-03-30 | 2004-04-19 | 27 | 2d | 0d | Разработчики продукта; Маркетинг | 240h |
| 30 | 1.3.2.2 | Определение и налаживание контакта с группой пользователей-испытателей |  | 5d | 2004-04-20 | 2004-04-26 | 29 | 12d | 10d | Маркетинг | 40h |
| 31 | 1.3.2.3 | Анализ конкурирующих продуктов |  | 15d | 2004-04-20 | 2004-05-10 | 29 | 2d | 0d | Маркетинг | 120h |
| 32 | 1.3.2.4 | Пересмотр требований к продукту |  | 10d | 2004-05-11 | 2004-05-24 | 30, 31 | 2d |  | Разработчики продукта | 80h |
| 33 | 1.3.3 | **Техническая оценка продукта** |  | 204d | 2004-03-30 | 2005-01-07 |  | 0d |  |  | 3488h |
| 34 | 1.3.3.1 | Определение требуемых характеристик продукта (выработка критериев производительности) |  | 2d | 2004-03-30 | 2004-03-31 | 27 | 0d |  | Разработчики продукта | 16h |
| 35 | 1.3.3.2 | Разработка процесса производства прототипа |  | 10d | 2004-04-01 | 2004-04-14 | 34 | 0d |  | Разработчики продукта | 80h |
| 36 | 1.3.3.3 | Производство прототипа продукта |  | 25d | 2004-04-15 | 2004-05-19 | 35 | 0d |  | Разработчики продукта | 200h |
| 37 | 1.3.3.4 | Проведение внутреннего анализа продукта |  | 5d | 2004-05-20 | 2004-05-26 | 36 | 0d |  | Руководство; Разработчики продукта | 80h |
| 38 | 1.3.3.5 | Документирование процесса подачи заявки на патент |  | 10d | 2004-04-01 | 2004-04-14 | 34 | 229d | 194d | Разработчики продукта | 80h |
| 39 | 1.3.3.6 | Проведение маркетингового и технического анализа |  | 92d | 2004-05-27 | 2004-10-01 | 37, 32 | 0d |  | Маркетинг; Разработчики продукта | 1472h |
| 40 | 1.3.3.7 | Изменение процесса (если необходимо) |  | 10d | 2004-10-04 | 2004-10-15 | 39 | 0d |  | Разработчики продукта; Инженер процесса | 160h |
| 41 | 1.3.3.8 | Изменение процесса производства прототипа |  | 15d | 2004-10-18 | 2004-11-05 | 40 | 0d |  | Инженер процесса | 120h |
| 42 | 1.3.3.9 | Разработка плана тестирования продукта пользователями |  | 5d | 2004-11-08 | 2004-11-12 | 41 | 20d |  | Руководитель проекта | 40h |
| 43 | 1.3.3.10 | Производство продукта для тестирования пользователями |  | 25d | 2004-11-08 | 2004-12-10 | 41 | 0d |  | Разработчики продукта; Маркетинг; Руководитель проекта | 600h |
| 44 | 1.3.3.11 | Пересмотр процесса предварительного производства |  | 10d | 2004-12-13 | 2004-12-24 | 43 | 10d |  | Инженер процесса; Инженер по производству | 160h |
| 45 | 1.3.3.12 | Оценка пользователями прототипа продукта |  | 20d | 2004-12-13 | 2005-01-07 | 43, 42 | 0d |  | Разработчики продукта; Руководитель проекта; Заказчик | 480h |
| 46 | 1.3.4 | **Оценка концепции** |  | 57d | 2005-01-10 | 2005-03-29 |  | 0d |  |  | 1376h |
| 47 | 1.3.4.1 | Проведение маркетингового и технического анализа |  | 2d | 2005-01-10 | 2005-01-11 | 45, 44 | 0d |  | Руководство; Разработчики продукта; Маркетинг | 48h |
| 48 | 1.3.4.2 | Подготовка процесса начального производства |  | 20d | 2005-01-12 | 2005-02-08 | 47 | 0d |  | Разработчики продукта | 160h |
| 49 | 1.3.4.3 | Оценка варианта производства по контракту |  | 10d | 2005-02-09 | 2005-02-22 | 48 | 467d |  | Юридический отдел; Инженер процесса | 160h |
| 50 | 1.3.4.4 | Рассмотрение вопросов правообладания и патентов |  | 10d | 2005-01-12 | 2005-01-25 | 47, 38 | 35d |  | Руководство; Юридический отдел | 160h |
| 51 | 1.3.4.5 | Анализ воздействия на окружающую среду |  | 10d | 2005-02-09 | 2005-02-22 | 48 | 5d |  | Разработчики продукта | 80h |
| 52 | 1.3.4.6 | Анализ продукта на предмет соответствия требованиям безопасности |  | 15d | 2005-01-12 | 2005-02-01 | 47 | 20d |  | Разработчики продукта; Отдел контроля безопасности | 240h |
| 53 | 1.3.4.7 | Оценка и прогноз длительности жизненного цикла продукта |  | 15d | 2005-02-09 | 2005-03-01 | 48 | 0d |  | Разработчики продукта; Руководитель проекта | 240h |
| 54 | 1.3.4.8 | Обновление финансового анализа |  | 10d | 2005-03-02 | 2005-03-15 | 53, 52, 51, 57 | 0d |  | Бухгалтерия | 80h |
| 55 | 1.3.4.9 | Анализ рисков |  | 10d | 2005-03-16 | 2005-03-29 | 50, 54, 52 | 0d |  | Разработчики продукта | 80h |
| 56 | 1.3.4.10 | Пересмотр критериев предварительного исследования |  | 2d | 2005-03-16 | 2005-03-17 | 54 | 8d |  | Руководство; Разработчики продукта; Юридический отдел | 48h |
| 57 | 1.3.4.11 | Разработка плана пилотной стадии |  | 5d | 2005-01-12 | 2005-01-18 | 48SS | 30d |  | Разработчики продукта; Руководитель проекта | 80h |
| 58 | 1.3.5 | Проведение анализа стадии разработки |  | 2d | 2005-03-30 | 2005-03-31 | 55, 56, 57 | 0d |  | Разработчики продукта; Руководитель проекта; Инженер процесса | 48h |
| 59 | 1.3.6 | Точка решения - передавать или не передавать проект на пилотную стадию | milestone | 0d | 2005-03-31 | 2005-03-31 | 58 | 0d |  | Руководство; Руководитель проекта |  |

| ID | WBS | Task | Duration | Start | Finish | Predecessors | Total slack | Resources | Work |
| --- | --- | --- | --- | --- | --- | --- | --- | --- | --- |
| 60 | 1.4 | **Пилотная стадия** | 115d | 2005-04-01 | 2005-09-08 |  | 0d |  | 1992h |
| 61 | 1.4.1 | Назначение ресурсов пилотной стадии | 1d | 2005-04-01 | 2005-04-01 | 58, 59 | 0d | Руководство; Руководитель проекта | 16h |
| 62 | 1.4.2 | Получение подтверждения намерений пользователей участвовать в процессе испытаний продукта | 5d | 2005-04-04 | 2005-04-08 | 61 | 0d | Юридический отдел; Руководитель проекта | 80h |
| 63 | 1.4.3 | **Производство продукта для испытаний** | 70d | 2005-04-11 | 2005-07-15 |  | 0d |  | 1160h |
| 64 | 1.4.3.1 | Планирование использования и резервирование мощностей для пилотного производства | 5d | 2005-04-11 | 2005-04-15 | 62 | 0d | Руководитель проекта | 40h |
| 65 | 1.4.3.2 | Обеспечение поставок сырья и завершение материально-технического обеспечения продукта | 5d | 2005-04-18 | 2005-04-22 | 64 | 0d | Разработчики продукта; Руководитель проекта | 80h |
| 66 | 1.4.3.3 | Рассмотрение плана и требований процесса испытаний | 5d | 2005-04-11 | 2005-04-15 | 62 | 5d | Разработчики продукта; Руководитель проекта | 80h |
| 67 | 1.4.3.4 | Начало производства испытательных образцов | 30d | 2005-04-25 | 2005-06-03 | 65, 66 | 0d | Разработчики продукта | 240h |
| 68 | 1.4.3.5 | Отслеживание хода пользовательских испытаний | 20d | 2005-04-25 | 2005-05-20 | 67SS | 0d | Разработчики продукта | 160h |
| 69 | 1.4.3.6 | Анализ предварительных результатов испытаний | 10d | 2005-05-23 | 2005-06-03 | 68 | 0d | Разработчики продукта; Руководитель проекта | 160h |
| 70 | 1.4.3.7 | Продолжение производства продукта для испытаний | 30d | 2005-06-06 | 2005-07-15 | 69 | 0d | Разработчики продукта | 240h |
| 71 | 1.4.3.8 | Завершение отслеживания хода пользовательских испытаний | 20d | 2005-06-06 | 2005-07-01 | 70SS | 0d | Разработчики продукта | 160h |
| 72 | 1.4.4 | **Анализ результатов испытаний** | 49d | 2005-07-04 | 2005-09-08 |  | 0d |  | 736h |
| 73 | 1.4.4.1 | Подтверждение стратегий сбыта и маркетинга | 5d | 2005-07-04 | 2005-07-08 | 71 | 0d | Маркетинг; Руководитель проекта | 80h |
| 74 | 1.4.4.2 | Подтверждение безопасности продукта | 5d | 2005-07-04 | 2005-07-08 | 73SS | 0d | Руководитель проекта; Отдел контроля безопасности | 80h |
| 75 | 1.4.4.3 | Пересмотр процессов производства | 15d | 2005-07-11 | 2005-07-29 | 73, 74 | 0d | Инженер процесса | 120h |
| 76 | 1.4.4.4 | Разработка плана производства коммерческих объемов | 15d | 2005-08-01 | 2005-08-19 | 75 | 0d | Разработчики продукта; Маркетинг | 240h |
| 77 | 1.4.4.5 | Ревизия средств | 5d | 2005-08-22 | 2005-08-26 | 76 | 5d | Бухгалтерия | 40h |
| 78 | 1.4.4.6 | Повторное рассмотрение вопросов правообладания и патентов | 10d | 2005-08-22 | 2005-09-02 | 76 | 0d | Юридический отдел | 80h |
| 79 | 1.4.4.7 | Назначение ответственного за организацию серийного производства и выделение необходимых ресурсов | 2d | 2005-09-05 | 2005-09-06 | 77, 78 | 0d | Руководство; Руководитель проекта | 32h |
| 80 | 1.4.4.8 | Анализ результатов пилотной стадии и принятие решения об организации серийного производства | 2d | 2005-09-07 | 2005-09-08 | 79 | 0d | Руководство; Разработчики продукта; Маркетинг; Инженер процесса | 64h |
| 81 | 1.5 | **Стадия организации серийного производства** | 195d | 2005-09-09 | 2006-06-08 |  | 0d |  | 3480h |
| 82 | 1.5.1 | **Производство и контроль продукта** | 168d | 2005-09-09 | 2006-05-02 |  | 0d |  | 2608h |
| 83 | 1.5.1.1 | Подтверждение спецификации продукта | 3d | 2005-09-09 | 2005-09-13 | 80 | 0d | Разработчики продукта; Инженер по производству | 48h |
| 84 | 1.5.1.2 | Подтверждение принятия пользователями спецификации и участия их в испытаниях | 10d | 2005-09-14 | 2005-09-27 | 83 | 0d | Разработчики продукта; Руководитель проекта | 160h |
| 85 | 1.5.1.3 | Разработка требований к процессу производства | 10d | 2005-09-28 | 2005-10-11 | 84 | 0d | Инженер процесса; Инженер по производству | 160h |
| 86 | 1.5.1.4 | Разработка и заказ нового оборудования | 30d | 2005-10-12 | 2005-11-22 | 85 | 0d | Разработчики продукта; Потребители | 480h |
| 87 | 1.5.1.5 | Установка и тестирование нового или модифицированного оборудования | 30d | 2005-11-23 | 2006-01-03 | 86 | 0d | Разработчики продукта; Инженер по производству | 480h |
| 88 | 1.5.1.6 | Подтверждение производственных возможностей | 10d | 2006-01-04 | 2006-01-17 | 87 | 0d | Инженер по производству | 80h |
| 89 | 1.5.1.7 | Разработка и рассмотрение плана испытаний продукта (разрешение вопросов материально-технического обеспечения) | 5d | 2006-01-18 | 2006-01-24 | 88 | 0d | Разработчики продукта; Руководитель проекта | 80h |
| 90 | 1.5.1.8 | Начало серийного производства продукта | 40d | 2006-01-25 | 2006-03-21 | 89 | 0d | Разработчики продукта; Инженер по производству | 640h |
| 91 | 1.5.1.9 | Отслеживание результатов тестирования пользователями | 30d | 2006-03-22 | 2006-05-02 | 90 | 0d | Разработчики продукта; Руководитель проекта | 480h |

| ID | WBS | Task | Duration | Start | Finish | Predecessors | Total slack | Free slack | Resources | Work |
| --- | --- | --- | --- | --- | --- | --- | --- | --- | --- | --- |
| 92 | 1.5.2 | **Анализ серийного производства** | 57d | 2006-03-22 | 2006-06-08 |  | 0d |  |  | 872h |
| 93 | 1.5.2.1 | Внутреннее тестирование продукта | 15d | 2006-03-22 | 2006-04-11 | 90 | 15d |  | Разработчики продукта | 120h |
| 94 | 1.5.2.2 | Оценка эффективности производства | 10d | 2006-05-03 | 2006-05-16 | 91, 93 | 0d |  | Руководство; Разработчики продукта; Руководитель проекта | 240h |
| 95 | 1.5.2.3 | Определение долгосрочных потребностей производства | 15d | 2006-05-17 | 2006-06-06 | 94 | 0d |  | Инженер процесса; Инженер по производству | 240h |
| 96 | 1.5.2.4 | Пересчет экономики проекта | 10d | 2006-05-17 | 2006-05-30 | 94 | 5d |  | Разработчики продукта; Маркетинг; Бухгалтерия | 240h |
| 97 | 1.5.2.5 | Подтверждение решения о продолжении серийного производства | 2d | 2006-06-07 | 2006-06-08 | 96, 95 | 0d |  | Руководство; Руководитель проекта | 32h |
| 98 | 1.6 | **Анализ после стабилизации серийного производства** | 130d | 2006-06-09 | 2006-12-07 |  | 0d |  |  | 3520h |
| 99 | 1.6.1 | Определение соответствия продукта ожиданиям "цена/производительность" потребителей | 60d | 2006-06-09 | 2006-08-31 | 97 | 0d |  | Руководство; Руководитель проекта | 960h |
| 100 | 1.6.2 | Определение соответствия реального объема сбыта прогнозируемым | 60d | 2006-06-09 | 2006-08-31 | 99SS | 40d | 0d | Руководство; Маркетинг | 960h |
| 101 | 1.6.3 | Определение конкурентоспособности продукта среди равных ему по классу | 30d | 2006-09-01 | 2006-10-12 | 100 | 40d |  | Руководство; Маркетинг | 480h |
| 102 | 1.6.4 | Оценка стабильности и затратной эффективности процесса производства | 40d | 2006-09-01 | 2006-10-26 | 99 | 0d |  | Руководитель проекта; Инженер по производству | 640h |
| 103 | 1.6.5 | Определение соответствия текущей экономики проекта прогнозируемой | 15d | 2006-10-27 | 2006-11-16 | 102 | 0d |  | Маркетинг | 120h |
| 104 | 1.6.6 | Оценка возможностей по расширению продукта или линии продуктов | 15d | 2006-11-17 | 2006-12-07 | 103 | 0d |  | Руководство; Разработчики продукта; Маркетинг | 360h |
